# УП_Шистерин

Schedule from MS Project, 2025-02-03 to 2025-08-18, status date 2025-04-01, costs in ₽, A marks actual dates.

## Calendars

- Стандартный: Mon-Fri 09:00-13:00, 14:00-18:00; Sat-Sun off. Exceptions (off unless hours are given): 2025-02-23, 2025-03-09, 2025-04-30 to 2025-05-01, 2025-05-07 to 2025-05-08, 2025-06-11.

## Resources

| Resource | Group | Rate |
| --- | --- | --- |
| Руководитель проекта | Руководство | 950 |
| Бизнес-аналитик | Аналитика | 750 |
| Аналитик требований | Аналитика | 700 |
| Архитектор | Проектирование | 1300 |
| UX/UI-дизайнер | Проектирование | 700 |
| Мобильный разработчик | Разработка | 1000 |
| Бэкенд-разработчик | Разработка | 1000 |
| DevOps-инженер | Разработка | 1100 |
| Тестировщик | Тестирование | 600 |
| Специалист по ИБ | Безопасность | 950 |
| Аналитик данных | Аналитика | 850 |
| Технический директор | Руководство | 1800 |
| Технический писатель | Документирование | 500 |
| Маркетолог | Продвижение | 600 |
| Комплект тестовых устройств | Оборудование | 15000 |
| Лицензии на средства разработки | Оборудование | 85000 |
| Услуги облачной инфраструктуры | Оборудование | 120000 |
| Услуги внешнего аудита ИБ | Оборудование | 250000 |

## Schedule

| ID | WBS | Task | Type | Duration | Start | Finish | Predecessors | Complete | Remaining | Baseline start | Baseline finish | Baseline duration | Total slack | Constraint | Resources | Work | Actual work | Cost | Baseline cost | Actual cost | Риск (сводно) |
| --- | --- | --- | --- | --- | --- | --- | --- | --- | --- | --- | --- | --- | --- | --- | --- | --- | --- | --- | --- | --- | --- |
| 1 | 1 | **Этап 1. Инициализация проекта и анализ требований** |  | 14.5d | 2025-02-03 05:00 A | 2025-02-21 14:00 A |  | 100% |  | 2025-02-03 05:00 | 2025-02-21 14:00 | 14.5d |  |  |  | 300h | 300h | 259,200 | 573,000 | 259,200 |  |
| 2 | 1.1 | Утверждение концепции и устав проекта | manual | 3d | 2025-02-03 05:00 A | 2025-02-05 13:00 A |  | 100% |  | 2025-02-03 05:00 | 2025-02-05 13:00 | 3d |  |  | Руководитель проекта [50%] | 12h | 12h | 11,400 | 30,000 | 11,400 |  |
| 3 | 1.2 | Анализ бизнес-процессов интернет-банка | manual | 5d | 2025-02-05 14:00 A | 2025-02-12 13:00 A | 2 | 100% |  | 2025-02-05 14:00 | 2025-02-12 13:00 | 5d |  |  | Бизнес-аналитик | 40h | 40h | 30,000 | 72,000 | 30,000 |  |
| 4 | 1.3 | Сбор и систематизация требований заказчика | manual | 6d | 2025-02-10 14:00 A | 2025-02-18 13:00 A | 2 | 100% |  | 2025-02-10 14:00 | 2025-02-18 13:00 | 6d |  |  | Бизнес-аналитик; Аналитик требований | 96h | 96h | 69,600 | 163,200 | 69,600 |  |
| 5 | 1.4 | Изучение нормативных требований (152-ФЗ, ГОСТ Р 56920) | manual | 4d | 2025-02-12 14:00 A | 2025-02-18 13:00 A | 3 | 100% |  | 2025-02-12 14:00 | 2025-02-18 13:00 | 4d |  |  | Аналитик требований | 32h | 32h | 22,400 | 51,200 | 22,400 | Риск: 40% / 120000 руб. |
| 6 | 1.5 | Анализ конкурентных мобильных банков | manual | 4d | 2025-02-12 14:00 A | 2025-02-18 13:00 A | 3 | 100% |  | 2025-02-12 14:00 | 2025-02-18 13:00 | 4d |  |  | Аналитик требований | 32h | 32h | 22,400 | 51,200 | 22,400 |  |
| 7 | 1.6 | Формирование бэклога и критериев приёмки | manual | 3d | 2025-02-18 14:00 A | 2025-02-21 13:00 A | 4, 5, 6 | 100% |  | 2025-02-18 14:00 | 2025-02-21 13:00 | 3d |  |  | Бизнес-аналитик | 24h | 24h | 18,000 | 43,200 | 18,000 |  |
| 8 | 1.7 | Создание репозитория и настройка CI/CD-конвейера | manual | 3d | 2025-02-05 09:00 A | 2025-02-07 18:00 A | 2SS+2d | 100% |  | 2025-02-05 09:00 | 2025-02-07 18:00 | 3d |  |  | DevOps-инженер | 24h | 24h | 26,400 | 55,200 | 26,400 |  |
| 9 | 1.8 | Развёртывание тестового стенда и средств автоматизации | manual | 5d | 2025-02-10 09:00 A | 2025-02-14 18:00 A | 8 | 100% |  | 2025-02-10 09:00 | 2025-02-14 18:00 | 5d |  |  | DevOps-инженер; Комплект тестовых устройств | 40h | 40h | 59,000 | 107,000 | 59,000 |  |
| 10 | 1.9 | Веха 1. Согласование требований и плана проекта | milestone, manual | 0d | 2025-02-21 14:00 A | 2025-02-21 14:00 A | 7, 9 | 100% |  | 2025-02-21 14:00 | 2025-02-21 14:00 | 0d |  |  | Руководитель проекта [50%] |  |  |  |  |  |  |
| 11 | 2 | **Этап 2. Проектирование мобильного приложения** |  | 21d | 2025-02-21 14:00 A | 2025-03-24 14:00 A |  | 100% |  | 2025-02-21 14:00 | 2025-03-24 14:00 | 21d |  |  |  | 435.2h | 435.2h | 457,360 | 1,071,200 | 457,360 |  |
| 12 | 2.1 | Разработка целевой архитектуры мобильного приложения | manual | 6d | 2025-02-21 14:00 A | 2025-03-03 13:00 A | 10 | 100% |  | 2025-02-21 14:00 | 2025-03-03 13:00 | 6d |  |  | Архитектор | 48h | 48h | 62,400 | 134,400 | 62,400 |  |
| 13 | 2.2 | Проектирование UX/UI мобильного интерфейса | manual | 8d | 2025-02-21 14:00 A | 2025-03-05 13:00 A | 10 | 100% |  | 2025-02-21 14:00 | 2025-03-05 13:00 | 8d |  |  | UX/UI-дизайнер | 64h | 64h | 44,800 | 121,600 | 44,800 |  |
| 14 | 2.3 | Проектирование интеграционного слоя с API банка | manual | 6d | 2025-03-03 14:00 A | 2025-03-11 13:00 A | 12 | 100% |  | 2025-03-03 14:00 | 2025-03-11 13:00 | 6d |  |  | Архитектор | 48h | 48h | 62,400 | 134,400 | 62,400 |  |
| 15 | 2.4 | Проектирование схемы БД офлайн-кэша | manual | 5d | 2025-03-04 14:00 A | 2025-03-11 13:00 A | 12 | 100% |  | 2025-03-04 14:00 | 2025-03-11 13:00 | 5d |  |  | Архитектор; Бэкенд-разработчик [50%] | 60h | 60h | 72,000 | 154,000 | 72,000 |  |
| 16 | 2.5 | Проектирование модели безопасности и аутентификации | manual | 5d | 2025-03-03 14:00 A | 2025-03-10 13:00 A | 12 | 100% |  | 2025-03-03 14:00 | 2025-03-10 13:00 | 5d |  |  | Специалист по ИБ | 40h | 40h | 38,000 | 108,000 | 38,000 |  |
| 17 | 2.6 | Разработка технического задания и API-контрактов | manual | 6d | 2025-03-11 14:00 A | 2025-03-19 13:00 A | 13, 14, 15, 16 | 100% |  | 2025-03-11 14:00 | 2025-03-19 13:00 | 6d |  |  | Архитектор | 48h | 48h | 62,400 | 134,400 | 62,400 | Риск: 35% / 95000 руб. |
| 18 | 2.7 | Разработка дизайн-макетов ключевых экранов | manual | 6d | 2025-03-05 14:00 A | 2025-03-13 13:00 A | 13 | 100% |  | 2025-03-05 14:00 | 2025-03-13 13:00 | 6d |  |  | UX/UI-дизайнер | 48h | 48h | 33,600 | 91,200 | 33,600 |  |
| 19 | 2.8 | Согласование дизайн-макетов с заказчиком | manual | 4d | 2025-03-13 14:00 A | 2025-03-19 13:00 A | 18 | 100% |  | 2025-03-13 14:00 | 2025-03-19 13:00 | 4d |  |  | UX/UI-дизайнер; Руководитель проекта [50%] | 48h | 48h | 37,600 | 100,800 | 37,600 |  |
| 20 | 2.9 | Рецензирование архитектурных решений | manual | 3d | 2025-03-19 14:00 A | 2025-03-24 13:00 A | 17 | 100% |  | 2025-03-19 14:00 | 2025-03-24 13:00 | 3d |  |  | Архитектор; Технический директор [30%] | 31.2h | 31.2h | 44,160 | 92,400 | 44,160 |  |
| 21 | 2.10 | Веха 2. Архитектура мобильного приложения согласована | milestone, manual | 0d | 2025-03-24 14:00 A | 2025-03-24 14:00 A | 19, 20 | 100% |  | 2025-03-24 14:00 | 2025-03-24 14:00 | 0d |  |  | Руководитель проекта [50%] |  |  |  |  |  |  |
| 22 | 3 | **Этап 3. Разработка функционального ядра** |  | 32d | 2025-03-24 14:00 A | 2025-05-13 13:00 |  | 14% | 27.5d | 2025-03-24 14:00 | 2025-05-13 13:00 | 32d | 0d |  |  | 979.6h | 148.48h | 917,760 | 2,081,600 | 148,224 |  |
| 23 | 3.1 | Разработка каркаса приложения и навигации | manual | 8d | 2025-03-24 14:00 A | 2025-04-03 13:00 | 21 | 80% | 1.6d | 2025-03-24 14:00 | 2025-04-03 13:00 | 8d |  |  | Мобильный разработчик [200%] | 128h | 102.4h | 128,000 | 281,600 | 102,400 | Риск: 30% / 150000 руб. |
| 24 | 3.2 | Реализация экрана аутентификации (PIN, биометрия) | manual | 6d | 2025-04-03 14:00 A | 2025-04-11 13:00 | 23 | 21% | 4.72d | 2025-04-03 14:00 | 2025-04-11 13:00 | 6d |  |  | Мобильный разработчик; Специалист по ИБ [50%] | 72h | 15.36h | 70,800 | 170,400 | 15,104 |  |
| 25 | 3.3 | Реализация главного экрана и списка операций | manual | 6d | 2025-04-03 14:00 A | 2025-04-11 13:00 | 23 | 21% | 4.72d | 2025-04-03 14:00 | 2025-04-11 13:00 | 6d |  |  | Мобильный разработчик | 48h | 10.24h | 48,000 | 105,600 | 10,240 |  |
| 26 | 3.4 | Реализация экрана платежей и переводов | manual | 10d | 2025-04-11 14:00 | 2025-04-25 13:00 | 24, 25 |  |  | 2025-04-11 14:00 | 2025-04-25 13:00 | 10d |  | must start on 2025-04-11 14:00 | Мобильный разработчик [200%] | 160h |  | 160,000 | 352,000 |  |  |
| 27 | 3.5 | Реализация чатов с поддержкой банка | manual | 6d | 2025-04-11 14:00 | 2025-04-21 13:00 | 25 |  |  | 2025-04-11 14:00 | 2025-04-21 13:00 | 6d |  |  | Мобильный разработчик; Бэкенд-разработчик [50%] | 72h |  | 72,000 | 156,000 |  |  |
| 28 | 3.6 | Реализация витрины продуктов и вкладов | manual | 5d | 2025-04-11 14:00 | 2025-04-18 13:00 | 25 |  |  | 2025-04-11 14:00 | 2025-04-18 13:00 | 5d |  |  | Мобильный разработчик | 40h |  | 40,000 | 88,000 |  |  |
| 29 | 3.7 | Разработка офлайн-режима и механизма синхронизации | manual | 8d | 2025-04-25 14:00 | 2025-05-13 13:00 | 26 |  |  | 2025-04-25 14:00 | 2025-05-13 13:00 | 8d |  |  | Мобильный разработчик; Бэкенд-разработчик | 128h |  | 128,000 | 275,200 |  | Риск: 45% / 180000 руб. |
| 30 | 3.8 | Интеграция с push-уведомлениями | manual | 4d | 2025-04-03 14:00 A | 2025-04-09 13:00 | 23 | 32% | 2.72d | 2025-04-03 14:00 | 2025-04-09 13:00 | 4d |  |  | Мобильный разработчик | 32h | 10.24h | 32,000 | 70,400 | 10,240 |  |
| 31 | 3.9 | Реализация модуля аналитики и персонализации | manual | 6d | 2025-04-11 14:00 | 2025-04-21 13:00 | 25 |  |  | 2025-04-11 14:00 | 2025-04-21 13:00 | 6d |  |  | Аналитик данных | 48h |  | 40,800 | 96,000 |  |  |
| 32 | 3.10 | Реализация офлайн-кэша на стороне клиента | manual | 6d | 2025-04-03 14:00 A | 2025-04-11 13:00 | 15, 23 | 21% | 4.72d | 2025-04-03 14:00 | 2025-04-11 13:00 | 6d |  |  | Мобильный разработчик | 48h | 10.24h | 48,000 | 105,600 | 10,240 |  |
| 33 | 3.11 | Реализация аналитических дашбордов | manual | 5d | 2025-04-21 14:00 | 2025-04-28 13:00 | 31SF+2d |  |  | 2025-04-21 14:00 | 2025-04-28 13:00 | 5d |  |  | Аналитик данных; Мобильный разработчик [50%] | 60h |  | 54,000 | 124,000 |  |  |
| 34 | 3.12 | Написание unit-тестов (целевое покрытие 80%) | manual | 7d | 2025-04-25 14:00 | 2025-05-12 13:00 | 24, 26, 27, 28, 32 |  |  | 2025-04-25 14:00 | 2025-05-12 13:00 | 7d |  | start no earlier than 2025-04-25 14:00 | Тестировщик [150%] | 84h |  | 50,400 | 142,800 |  |  |
| 35 | 3.13 | Нагрузочное тестирование API банка | manual | 5d | 2025-04-30 14:00 | 2025-05-12 13:00 | 34FF+1d |  |  | 2025-04-30 14:00 | 2025-05-12 13:00 | 5d |  |  | Тестировщик [99%]; DevOps-инженер [50%] | 59.6h |  | 45,760 | 114,000 |  |  |
| 36 | 3.14 | Веха 3. Функциональное ядро разработано | milestone, manual | 0d | 2025-05-07 14:00 | 2025-05-07 14:00 | 30, 33, 34, 35 |  |  | 2025-05-07 14:00 | 2025-05-07 14:00 | 0d |  |  | Руководитель проекта [50%] |  |  |  |  |  |  |

Notes:
- 5: Риск: изменение требований 152-ФЗ в ходе проекта. Вероятность 40%, ожидаемые потери 120 000 руб. Меры: предварительное согласование регламентов со службой ИБ, буфер 2 дня.
- 17: Риск: несогласованность API-контрактов с банковской интеграцией. Вероятность 35%, потери 95 000 руб. Меры: еженедельный синхронизационный семинар с интеграторами.
- 23: Риск: дефицит мобильных разработчиков в команде. Вероятность 30%, потери 150 000 руб. Меры: буфер 3 дня, резерв из команды backend-разработки.
- 29: Риск: нестабильная работа офлайн-режима при потере связи. Вероятность 45%, потери 180 000 руб. Меры: тестирование на реальных устройствах, буфер 4 дня.

| ID | WBS | Task | Type | Duration | Start | Finish | Predecessors | Baseline start | Baseline finish | Baseline duration | Total slack | Constraint | Resources | Work | Cost | Baseline cost | Риск (сводно) |
| --- | --- | --- | --- | --- | --- | --- | --- | --- | --- | --- | --- | --- | --- | --- | --- | --- | --- |
| 37 | 4 | **Этап 4. Интеграция с банковскими сервисами** |  | 26.5d | 2025-05-07 14:00 | 2025-06-17 13:00 |  | 2025-05-07 14:00 | 2025-06-17 13:00 | 26.5d | 0d |  |  | 467.36h | 679,160 | 1,244,000 |  |
| 38 | 4.1 | Разработка клиента REST API интернет-банка | manual | 8d | 2025-05-07 14:00 | 2025-05-20 13:00 | 36 | 2025-05-07 14:00 | 2025-05-20 13:00 | 8d |  |  | Бэкенд-разработчик [149%] | 95.36h | 95,360 | 201,600 |  |
| 39 | 4.2 | Интеграция с платёжным шлюзом | manual | 7d | 2025-05-19 14:00 | 2025-05-28 13:00 | 38 | 2025-05-19 14:00 | 2025-05-28 13:00 | 7d |  |  | Бэкенд-разработчик | 56h | 56,000 | 117,600 |  |
| 40 | 4.3 | Интеграция с системой биометрической аутентификации | manual | 5d | 2025-05-19 14:00 | 2025-05-26 13:00 | 24, 38 | 2025-05-19 14:00 | 2025-05-26 13:00 | 5d |  |  | Мобильный разработчик; Специалист по ИБ [50%] | 60h | 59,000 | 142,000 | Риск: 25% / 60000 руб. |
| 41 | 4.4 | Интеграция с push-сервисом банка | manual | 4d | 2025-05-19 14:00 | 2025-05-23 13:00 | 30, 38 | 2025-05-19 14:00 | 2025-05-23 13:00 | 4d |  |  | DevOps-инженер | 32h | 35,200 | 73,600 |  |
| 42 | 4.5 | Интеграция с CRM и системой чатов | manual | 6d | 2025-05-19 14:00 | 2025-05-27 13:00 | 27, 38 | 2025-05-19 14:00 | 2025-05-27 13:00 | 6d |  |  | Бэкенд-разработчик | 48h | 48,000 | 100,800 |  |
| 43 | 4.6 | Настройка мониторинга и логирования (Sentry) | manual | 4d | 2025-05-19 14:00 | 2025-05-23 13:00 | 38 | 2025-05-23 14:00 | 2025-05-29 13:00 | 4d |  |  | DevOps-инженер | 32h | 35,200 | 73,600 |  |
| 44 | 4.7 | Проверка соответствия требованиям 152-ФЗ | manual | 5d | 2025-05-26 14:00 | 2025-06-02 13:00 | 16, 40 | 2025-05-26 14:00 | 2025-06-02 13:00 | 5d |  |  | Специалист по ИБ; Услуги внешнего аудита ИБ | 40h | 288,000 | 358,000 |  |
| 45 | 4.8 | Регрессионное тестирование интеграций | manual | 6d | 2025-06-02 14:00 | 2025-06-10 13:00 | 39, 40, 41, 42, 43, 44 | 2025-06-02 14:00 | 2025-06-10 13:00 | 6d |  |  | Тестировщик [150%] | 72h | 43,200 | 122,400 |  |
| 46 | 4.9 | Тестирование отказоустойчивости каналов связи | manual | 4d | 2025-06-10 14:00 | 2025-06-17 13:00 | 43, 45 | 2025-06-10 14:00 | 2025-06-17 13:00 | 4d |  |  | Тестировщик | 32h | 19,200 | 54,400 |  |
| 47 | 4.10 | Веха 4. Интеграционные работы завершены | milestone, manual | 0d | 2025-06-16 14:00 | 2025-06-16 14:00 | 45, 46 | 2025-06-16 14:00 | 2025-06-16 14:00 | 0d |  |  | Руководитель проекта [50%] |  |  |  |  |
| 48 | 5 | **Этап 5. Тестирование и обеспечение качества** |  | 47.5d | 2025-05-07 14:00 | 2025-07-16 14:00 |  | 2025-05-07 14:00 | 2025-07-16 14:00 | 47.5d | 0d |  |  | 507.6h | 388,760 | 992,000 |  |
| 49 | 5.1 | Разработка тест-плана и тест-кейсов | manual | 5d | 2025-05-07 14:00 | 2025-05-15 13:00 | 36 | 2025-05-07 14:00 | 2025-05-15 13:00 | 5d |  |  | Тестировщик [99%]; Бизнес-аналитик [50%] | 59.6h | 38,760 | 104,000 |  |
| 50 | 5.2 | Функциональное тестирование | manual | 8d | 2025-06-10 14:00 | 2025-06-23 13:00 | 45, 49 | 2025-06-10 14:00 | 2025-06-23 13:00 | 8d |  |  | Тестировщик [200%] | 128h | 76,800 | 217,600 | Риск: 50% / 220000 руб. |
| 51 | 5.3 | Тестирование удобства использования (UX) | manual | 4d | 2025-06-20 14:00 | 2025-06-26 13:00 | 50 | 2025-06-20 14:00 | 2025-06-26 13:00 | 4d |  |  | UX/UI-дизайнер | 32h | 22,400 | 60,800 |  |
| 52 | 5.4 | Тестирование защищённости (pentest) | manual | 5d | 2025-06-20 14:00 | 2025-06-27 13:00 | 44, 50 | 2025-06-20 14:00 | 2025-06-27 13:00 | 5d |  |  | Специалист по ИБ | 40h | 38,000 | 108,000 |  |
| 53 | 5.5 | Тестирование совместимости с устройствами и ОС | manual | 5d | 2025-06-20 14:00 | 2025-06-27 13:00 | 50 | 2025-06-20 14:00 | 2025-06-27 13:00 | 5d |  |  | Тестировщик | 40h | 24,000 | 68,000 |  |
| 54 | 5.6 | Тестирование офлайн-режима при потере связи | manual | 3d | 2025-06-20 14:00 | 2025-06-25 13:00 | 29, 50 | 2025-06-20 14:00 | 2025-06-25 13:00 | 3d |  |  | Тестировщик | 24h | 14,400 | 40,800 |  |
| 55 | 5.7 | Исправление выявленных дефектов | manual | 10d | 2025-06-27 14:00 | 2025-07-11 13:00 | 51, 52, 53, 54 | 2025-06-27 14:00 | 2025-07-11 13:00 | 10d |  | finish no later than 2025-07-16 13:00 | Мобильный разработчик [200%] | 160h | 160,000 | 352,000 |  |
| 56 | 5.8 | Подготовка отчёта о тестировании | manual | 3d | 2025-07-11 14:00 | 2025-07-16 13:00 | 55 | 2025-07-11 14:00 | 2025-07-16 13:00 | 3d |  |  | Тестировщик | 24h | 14,400 | 40,800 |  |
| 57 | 5.9 | Веха 5. Тестирование завершено | milestone, manual | 0d | 2025-07-16 14:00 | 2025-07-16 14:00 | 56 | 2025-07-16 14:00 | 2025-07-16 14:00 | 0d |  |  | Руководитель проекта [50%] |  |  |  |  |
| 58 | 6 | **Этап 6. Подготовка к эксплуатации и выпуск** |  | 131.5d | 2025-02-07 05:00 | 2025-08-18 13:00 |  | 2025-07-16 14:00 | 2025-08-18 13:00 | 23d | 0d |  |  | 252h | 339,200 | 635,200 |  |
| 59 | 6.1 | Подготовка руководства пользователя | manual | 4d | 2025-07-16 14:00 | 2025-07-22 13:00 | 57 | 2025-07-16 14:00 | 2025-07-22 13:00 | 4d |  |  | Технический писатель [50%] | 16h | 8,000 | 22,400 |  |
| 60 | 6.2 | Обучение сотрудников поддержки | manual | 3d | 2025-07-22 14:00 | 2025-07-25 13:00 | 59 | 2025-07-22 14:00 | 2025-07-25 13:00 | 3d |  |  | Руководитель проекта [50%]; Бизнес-аналитик [50%] | 24h | 20,400 | 51,600 |  |
| 61 | 6.3 | Настройка мониторинга продуктивной среды | manual | 3d | 2025-07-16 14:00 | 2025-07-21 13:00 | 43, 57 | 2025-07-23 14:00 | 2025-07-28 13:00 | 3d |  |  | DevOps-инженер; Услуги облачной инфраструктуры | 24h | 146,400 | 175,200 |  |
| 62 | 6.4 | Публикация в App Store и Google Play | manual | 5d | 2025-07-16 14:00 | 2025-07-23 13:00 | 57 | 2025-07-16 14:00 | 2025-07-23 13:00 | 5d |  |  | DevOps-инженер | 40h | 44,000 | 92,000 |  |
| 63 | 6.5 | Проведение приёмочных испытаний с заказчиком | manual | 4d | 2025-07-25 14:00 | 2025-07-31 13:00 | 57, 60 | 2025-07-25 14:00 | 2025-07-31 13:00 | 4d |  | must finish on 2025-07-31 13:00 | Бизнес-аналитик; Руководитель проекта [50%] | 48h | 39,200 | 97,600 | Риск: 20% / 45000 руб. |
| 64 | 6.6 | Передача документации и исходного кода | manual | 3d | 2025-07-23 14:00 | 2025-07-28 13:00 | 59, 62 | 2025-07-23 14:00 | 2025-07-28 13:00 | 3d |  |  | Технический директор [30%] | 7.2h | 12,960 | 25,200 |  |
| 65 | 6.7 | Запуск рекламной кампании | manual | 6d | 2025-07-31 14:00 | 2025-08-08 13:00 | 63 | 2025-07-31 14:00 | 2025-08-08 13:00 | 6d |  |  | Маркетолог | 48h | 28,800 | 76,800 |  |
| 66 | 6.8 | Анализ первых отзывов и корректировка | manual | 4d | 2025-08-08 14:00 | 2025-08-14 13:00 | 62, 63, 65 | 2025-08-08 14:00 | 2025-08-14 13:00 | 4d |  |  | Маркетолог [50%]; Аналитик данных [50%] | 32h | 23,200 | 57,600 |  |
| 67 | 6.9 | Веха 6. Релиз мобильного приложения выполнен | milestone, manual | 0d | 2025-08-14 14:00 | 2025-08-14 14:00 | 61, 64, 66 | 2025-08-14 14:00 | 2025-08-14 14:00 | 0d |  |  | Руководитель проекта [50%] |  |  |  |  |

Notes:
- 40: Риск: задержка поставки SDK биометрической аутентификации. Вероятность 25%, потери 60 000 руб. Меры: использовать резервный SDK.
- 50: Риск: массовые дефекты на этапе функционального тестирования. Вероятность 50%, потери 220 000 руб. Меры: буфер 5 дней в этапе исправления дефектов.
- 63: Риск: неготовность заказчика к приёмочным испытаниям. Вероятность 20%, потери 45 000 руб. Меры: раннее согласование сценариев испытаний.

| ID | WBS | Task | Type | Duration | Start | Finish | Predecessors | Baseline start | Baseline finish | Baseline duration | Total slack | Constraint | Resources | Work | Cost | Baseline cost |
| --- | --- | --- | --- | --- | --- | --- | --- | --- | --- | --- | --- | --- | --- | --- | --- | --- |
| 68 | 6.10 | **Совещание** |  | 130d | 2025-02-07 05:00 | 2025-08-15 06:00 |  |  |  |  | 0d |  |  |  |  |  |
| 69 | 6.10.1 | Совещание 1 | manual | 1h | 2025-02-07 05:00 | 2025-02-07 06:00 |  |  |  |  |  | start no earlier than 2025-02-07 05:00 |  |  |  |  |
| 70 | 6.10.2 | Совещание 2 | manual | 1h | 2025-02-14 05:00 | 2025-02-14 06:00 |  |  |  |  |  | start no earlier than 2025-02-14 05:00 |  |  |  |  |
| 71 | 6.10.3 | Совещание 3 | manual | 1h | 2025-02-21 05:00 | 2025-02-21 06:00 |  |  |  |  |  | start no earlier than 2025-02-21 05:00 |  |  |  |  |
| 72 | 6.10.4 | Совещание 4 | manual | 1h | 2025-02-28 05:00 | 2025-02-28 06:00 |  |  |  |  |  | start no earlier than 2025-02-28 05:00 |  |  |  |  |
| 73 | 6.10.5 | Совещание 5 | manual | 1h | 2025-03-07 05:00 | 2025-03-07 06:00 |  |  |  |  |  | start no earlier than 2025-03-07 05:00 |  |  |  |  |
| 74 | 6.10.6 | Совещание 6 | manual | 1h | 2025-03-14 05:00 | 2025-03-14 06:00 |  |  |  |  |  | start no earlier than 2025-03-14 05:00 |  |  |  |  |
| 75 | 6.10.7 | Совещание 7 | manual | 1h | 2025-03-21 05:00 | 2025-03-21 06:00 |  |  |  |  |  | start no earlier than 2025-03-21 05:00 |  |  |  |  |
| 76 | 6.10.8 | Совещание 8 | manual | 1h | 2025-03-28 05:00 | 2025-03-28 06:00 |  |  |  |  |  | start no earlier than 2025-03-28 05:00 |  |  |  |  |
| 77 | 6.10.9 | Совещание 9 | manual | 1h | 2025-04-04 05:00 | 2025-04-04 06:00 |  |  |  |  |  | start no earlier than 2025-04-04 05:00 |  |  |  |  |
| 78 | 6.10.10 | Совещание 10 | manual | 1h | 2025-04-11 05:00 | 2025-04-11 06:00 |  |  |  |  |  | start no earlier than 2025-04-11 05:00 |  |  |  |  |
| 79 | 6.10.11 | Совещание 11 | manual | 1h | 2025-04-18 05:00 | 2025-04-18 06:00 |  |  |  |  |  | start no earlier than 2025-04-18 05:00 |  |  |  |  |
| 80 | 6.10.12 | Совещание 12 | manual | 1h | 2025-04-25 05:00 | 2025-04-25 06:00 |  |  |  |  |  | start no earlier than 2025-04-25 05:00 |  |  |  |  |
| 81 | 6.10.13 | Совещание 13 | manual | 1h | 2025-05-02 05:00 | 2025-05-02 06:00 |  |  |  |  |  | start no earlier than 2025-05-02 05:00 |  |  |  |  |
| 82 | 6.10.14 | Совещание 14 | manual | 1h | 2025-05-09 05:00 | 2025-05-09 06:00 |  |  |  |  |  | start no earlier than 2025-05-09 05:00 |  |  |  |  |
| 83 | 6.10.15 | Совещание 15 | manual | 1h | 2025-05-16 05:00 | 2025-05-16 06:00 |  |  |  |  |  | start no earlier than 2025-05-16 05:00 |  |  |  |  |
| 84 | 6.10.16 | Совещание 16 | manual | 1h | 2025-05-23 05:00 | 2025-05-23 06:00 |  |  |  |  |  | start no earlier than 2025-05-23 05:00 |  |  |  |  |
| 85 | 6.10.17 | Совещание 17 | manual | 1h | 2025-05-30 05:00 | 2025-05-30 06:00 |  |  |  |  |  | start no earlier than 2025-05-30 05:00 |  |  |  |  |
| 86 | 6.10.18 | Совещание 18 | manual | 1h | 2025-06-06 05:00 | 2025-06-06 06:00 |  |  |  |  |  | start no earlier than 2025-06-06 05:00 |  |  |  |  |
| 87 | 6.10.19 | Совещание 19 | manual | 1h | 2025-06-13 05:00 | 2025-06-13 06:00 |  |  |  |  |  | start no earlier than 2025-06-13 05:00 |  |  |  |  |
| 88 | 6.10.20 | Совещание 20 | manual | 1h | 2025-06-20 05:00 | 2025-06-20 06:00 |  |  |  |  |  | start no earlier than 2025-06-20 05:00 |  |  |  |  |
| 89 | 6.10.21 | Совещание 21 | manual | 1h | 2025-06-27 05:00 | 2025-06-27 06:00 |  |  |  |  |  | start no earlier than 2025-06-27 05:00 |  |  |  |  |
| 90 | 6.10.22 | Совещание 22 | manual | 1h | 2025-07-04 05:00 | 2025-07-04 06:00 |  |  |  |  |  | start no earlier than 2025-07-04 05:00 |  |  |  |  |
| 91 | 6.10.23 | Совещание 23 | manual | 1h | 2025-07-11 05:00 | 2025-07-11 06:00 |  |  |  |  |  | start no earlier than 2025-07-11 05:00 |  |  |  |  |
| 92 | 6.10.24 | Совещание 24 | manual | 1h | 2025-07-18 05:00 | 2025-07-18 06:00 |  |  |  |  |  | start no earlier than 2025-07-18 05:00 |  |  |  |  |
| 93 | 6.10.25 | Совещание 25 | manual | 1h | 2025-07-25 05:00 | 2025-07-25 06:00 |  |  |  |  |  | start no earlier than 2025-07-25 05:00 |  |  |  |  |
| 94 | 6.10.26 | Совещание 26 | manual | 1h | 2025-08-01 05:00 | 2025-08-01 06:00 |  |  |  |  |  | start no earlier than 2025-08-01 05:00 |  |  |  |  |
| 95 | 6.10.27 | Совещание 27 | manual | 1h | 2025-08-08 05:00 | 2025-08-08 06:00 |  |  |  |  |  | start no earlier than 2025-08-08 05:00 |  |  |  |  |
| 96 | 6.10.28 | Совещание 28 | manual | 1h | 2025-08-15 05:00 | 2025-08-15 06:00 |  |  |  |  |  | start no earlier than 2025-08-15 05:00 |  |  |  |  |
| 97 | 6.11 | Закрытие проекта и архивирование | manual | 2d | 2025-08-14 14:00 | 2025-08-18 13:00 | 67 | 2025-08-14 14:00 | 2025-08-18 13:00 | 2d |  |  | Руководитель проекта [50%]; Технический директор [30%] | 12.8h | 16,240 | 36,800 |
